# eStationSunset

Schedule from MS Project, 2018-03-08 to 2019-04-25.
AIG

## Calendars

- Standard: Mon-Fri 08:00-12:00, 13:00-17:00; Sat-Sun off. Exceptions (off unless hours are given): 2018-05-28 (Memorial Day), 2018-06-28 08:00-12:00, 13:00-17:00, 2018-07-04 (Independence Day / July 4th), 2018-07-10 08:00-12:00, 13:00-17:00, 2018-07-12 08:00-12:00, 13:00-17:00, 2018-07-19 to 2018-07-20 08:00-12:00, 13:00-17:00, 2018-07-25 08:00-12:00, 13:00-17:00, 2018-07-27 08:00-12:00, 13:00-17:00, 2018-08-01 08:00-12:00, 13:00-17:00, 2018-09-03 (Labor Day), 2018-11-22 to 2018-11-23 (Thanksgiving), 2018-12-25 (Christmas Day), 2019-01-01 (New Year's Day).

## Resources

| Resource |
| --- |
| Nadeau |
| Melster |
| Michael Harrison |
| Lees |
| Steffek |
| TBD |
| Keeble |
| Kizzy LeBlanc |
| Tasha Lair |
| Basanth |
| Kerri Niemiec |
| Kyle Nash |
| Hector Diaz |
| Patrice |
| Paula |
| Eddie Rains |
| Chris Cutts |
| Denise Parmenter |
| Leigh Steffek |
| Kevin W |
| Sanjay |
| Jason Li |
| Ebe |
| Nat |
| Vishy |
| Ravi |
| Dave |
| Krishna |
| James Perry |
| Dave G |
| Pam Turner |
| Kerri Niemiec |
| Sreekesh Menon |
| Ram |
| Sofia |
| Dan Reidy |
| Laxma |
| Pam Turner |
| Ron Nadeau |
| Nancy Smith |
| Michael Harrison |
| Sejal |
| Deep |
| Dev Team |
| SSO Component Team |
| Balaji Madana |
| Nirmala |
| Arlene |
| Sherry |
| Sonia Brewer |
| Ravi Dubagunta |
| Theresa Aguilar |
| Kevin Brezner |
| Jennifer Cole |
| PinPointGlobal |
| AIG |
| Denise Parmenter |
| Leigh Steffek |
| Eddie Rains |
| QA |
| Adcetera |
| Roundtable representation |
| Deep |
| Talend Team |
| Nambi |
| Gayathri |
| Silpa |
| Quality Engineering |
| Leadership |
| DevOps Team |
| Nandita Munganoor |
| Ramesh |
| Nandita Munganoor |
| Foresight |
| Tasha Lair |
| Mohan |
| Bharat |
| Sridhar |
| Komal |
| Pramod |
| Jai |
| Michael |
| Jennifer |
| Beta tech leads |
| Kevin |
| Deep |
| Jiaxin |
| LIF Team |
| Sailendra |
| George Meltzer |
| Mary Myers |
| Jana Klotz |
| Maya Henderson |
| James Cockrell |
| Derek Smith |
| Hector Diaz |
| TEAM |
| Sean Suggs |
| Sarah |
| Nitisha |
| Urop |
| Vijaya Goparaju |
| Mona Hubbard |
| Tushar Shah |
| Sanjay Team |
| Raj |
| James |
| Vijaya |
| Paula Andries Gray |
| Sue Gebhardt |
| Karen Argent |
| Resource Needed (Nirmala) |
| Ramesh V |
| Dave Benoit |
| Ohler |
| Brown |
| Kartik Chikkala |
| Randy Helms |
| Aman Singh |
| Arun |
| Balaji |
| Keith |
| Mike |
| Priya |
| Prasath |
| Indrajit |
| TTeam |
| Cassandra |
| Content Team |
| Data Pod |
| Kerri Niemiec |
| Danielle Lewis |
| UAT |
| Amy Davis |
| Sharon |
| Beth |
| Annuity Team |
| Annutity AB |
| Chris Lochner |
| Melissa H |
| Dan |
| Kyle Nash |
| Ran Meng |
| Michael Ward |
| Kieit |
| Ashok Moniyavar |
| Ravi Mylavarupa |
| Anbu |
| Teri Miel |
| Greg |
| Vivek Patwari |
| Anand Nagarajan |
| ReactJS Dev 2 |
| Ravi Thulluru |
| Software Engineering |
| Lori Gordon |
| tasha |
| ABhinav |
| Nandita |
| Kyle |
| Steve Laret |
| insurance Technologies |
| Pam |
| Melissa |
| tushar |
| Stacy |
| Rahul |
| shared Salendra and Bharat |
| Java |
| James Vijaya |
| Ash' |
| Priya Jeyalakshmi |
| Siva |
| Latha Mudda |
| Jaixin liu |
| Jessie |
| Gay |
| Ewing |
| ReactJS Dev 1 |
| ReactJS Dev 3 |
| Run |
| QA Team |
| Any avialable team member |
| Purna |
| Michael W |
| API Dev1 |
| API Dev2 |
| API Dev3 |
| API Dev4 |
| ReactJS Dev 20 |
| Vanessa/Nandita/Patrice |
| Nancy |
| Dave B |
| LiF |
| Uma |
| Kyle/Patrice |
| Beth Jordon |
| Kizzy |
| Dave Taylor |
| Review by Team |
| James/Raj |
| James/Ramesh |
| Stacy Brown |
| Rajkumar |
| stakeholders |
| Raj and Vijaya |
| Vidya |
| Mona |
| Mary |
| Mon |
| Beth / Rajiv |
| kartik |
| ramesh/nirmal |
| J.Cole team |
| k.Irby Team |
| Responsibility |
| Vikas Lalli |
| Arlene D'Silva |
| Nidhi Singh/Gomathi Manohar |
| James Hahn |
| Jon Campbell |
| Teri Meil/ Steve Burnett |
| Dave Benoit/ Anbu |
| Gomathi Manohar |
| Anbu team |
| Jerry Yerger |
| Purna Kanigalpula |
| Shweta joshi |
| Purna Kanigalpuna & Sircon QA |
| Nidhi Singh |
| Lorri Gordon |
| Steve Johnson |
| Sri Badam |
| Daniel Reidy |
| (Kerri Neimic) |
| Goura |
| Divya |
| Vidhya |
| Theresa |
| Sonmoth Deshmuk |
| Sonmoth Deshmukh |
| Mona HubbardMary Myers |
| Aniban Roy |
| Ramesh Geeni |
| Sherry Thornton |
| Shery Thornton |
| Connext |
| Aniban |
| Kizza? |
| Beth or Melissa |
| Pratik |
| Sonmath Deshmuk |
| Somnath Deshmuk |
| Ravi Tvn |
| Beth D |
| Nitisha? |
| Loki or Billy |
| Sailendra? |
| L&C team |
| EStation |
| Siteminder |
| eStation team |
| Loki |
| Billy |
| Chandrasekaran |
| Umamaheswari |
| Uma Chandrasekaran |
| Uma or Bill |
| Uma or Billy |
| Anirban Roy |
| Ravi Mylavarapu |
| Abid Mohammad |
| James Sneed |
| Karthik Arupula |
| Mounika Manchikalapudi |
| FDM |
| Lana |
| Gopi |
| Sophia |
| John Campbell |
| Souvik Souvik |
| Lana Shilnik |
| Patrice Wondercheck |
| Deep Nalakonda |
| Scott Myers |
| Pramod Terdale |
| Chareese |
| Komal/Kartik |
| Ramesh vankadaru |
| Ramkumar |
| Ramkumar/Ramesh V |
| Ravikumar Thulluru |
| Sharon Aponte |
| UmaShankar |
| UI Developer 2 |
| UI Developer 2/Umashankar |
| Annuities Developer |
| Annuities QA |
| Rames Vankadaru |
| Ba |
| A |
| Uma Shankar |
| Durga Mounika |
| Michael Gregory |
| Prasath/Ravi |
| Durga Mounika/Ramesh V |
| James/Ramesh V |
| Ivan |
| Maya and Hector |
| Data Gov |
| Source Data SME |
| Data Archi |
| Connext API Tech Lead |
| Cassandra DBA |
| Data Arch |

## Schedule

| ID | WBS | Task | Type | Duration | Start | Finish | Predecessors | Total slack | Free slack | Constraint | Resources | Work |
| --- | --- | --- | --- | --- | --- | --- | --- | --- | --- | --- | --- | --- |
| 1 | 1 | **(R28-1) EXTERNAL DEPENDENCIES** |  | 252d | 2018-03-08 | 2019-03-05 |  | 37d |  |  |  | 208h |
| 2 | 1.1 | **Data** |  | 10d | 2019-02-20 | 2019-03-05 |  | 31d |  |  |  | 208h |
| 3 | 1.1.1 | **ALIP, AGNIS, Vantage & Vflex for R28-1 - Addition of Product Specific Tabs and Functionality - Life** |  | 10d | 2019-02-20 | 2019-03-05 |  | 31d |  |  |  | 208h |
| 4 | 1.1.1.1 | Data Verification (Life policy data and annuities contract data) |  | 2d | 2019-02-20 | 2019-02-21 | 24 | 31d | 0d |  | Data Gov | 16h |
| 5 | 1.1.1.2 | Conceptual Solution Data Architecture |  | 2d | 2019-02-22 | 2019-02-25 | 4 | 31d | 0d |  | Data Gov; Source Data SME; Data Archi; Connext API Tech Lead; Cassandra DBA | 80h |
| 6 | 1.1.1.3 | Data Modeling / Metadata (Source to Clean Lake) |  | 1d | 2019-02-26 | 2019-02-26 | 5 | 31d | 0d |  | Data Gov | 8h |
| 7 | 1.1.1.4 | Data Mapping Update to Data Requirements Spreadsheet including Json Tag Names |  | 2d | 2019-02-27 | 2019-02-28 | 6 | 31d | 0d |  | Data Gov | 16h |
| 8 | 1.1.1.5 | Data Acquisition ETL |  | 3d | 2019-02-27 | 2019-03-01 | 6 | 31d | 0d |  | Connext; LiF | 48h |
| 9 | 1.1.1.6 | Dat Modeling Cassandra (Data Provisioning DBA) |  | 1d | 2019-03-01 | 2019-03-01 | 7, 40 | 31d | 0d |  | Cassandra DBA | 8h |
| 10 | 1.1.1.7 | Data Provisioning Cassandra (ETL) |  | 2d | 2019-03-04 | 2019-03-05 | 8, 9 | 31d | 0d |  | Connext; LiF | 32h |
| 11 | 1.2 | **Foundation** |  | 0d | 2018-03-08 | 2018-03-08 |  | 289d |  |  |  |  |
| 12 | 1.2.1 | Foundation | milestone | 0d | 2018-03-08 | 2018-03-08 |  | 289d |  |  |  |  |
| 13 | 1.3 | **Adcetra (UX)** |  | 5d | 2019-02-14 | 2019-02-20 |  | 46d |  |  |  |  |
| 14 | 1.3.1 | (R28-1) Creation of UI Mockups |  | 5d | 2019-02-14 | 2019-02-20 | 18 | 46d | 0d |  |  |  |
| 15 | 2 | **(R28-1) - Addition of Product Specific Tabs and Functionality - Life** |  | 54d | 2019-02-11 | 2019-04-25 |  | 0d |  |  |  | 264h |
| 16 | 2.1 | **Requirements** |  | 8d | 2019-02-11 | 2019-02-20 |  | 31d |  |  |  | 72h |
| 17 | 2.1.1 | Requirements Gathering |  | 2d | 2019-02-11 | 2019-02-12 |  | 31d | 0d | start no earlier than 2019-02-11 |  |  |
| 18 | 2.1.2 | Provide Adcetra with UI requirements |  | 1d | 2019-02-13 | 2019-02-13 | 17 | 46d | 0d |  |  |  |
| 19 | 2.1.3 | **BRD** |  | 8d | 2019-02-11 | 2019-02-20 |  | 31d |  |  |  | 72h |
| 20 | 2.1.3.1 | Gap Analysis and BRD Intial Draft |  | 4d | 2019-02-11 | 2019-02-14 | 17SS | 31d | 0d | start no earlier than 2019-02-11 | Ba | 32h |
| 21 | 2.1.3.2 | Business Walk |  | 1d | 2019-02-15 | 2019-02-15 | 20 | 31d | 0d |  | Ba | 8h |
| 22 | 2.1.3.3 | Tech Walk |  | 1d | 2019-02-18 | 2019-02-18 | 21 | 31d | 0d |  | Ba | 8h |
| 23 | 2.1.3.4 | Receive UI Mockups from Adctera | milestone | 0d | 2019-02-20 | 2019-02-20 | 14 | 46d |  |  |  |  |
| 24 | 2.1.3.5 | Create draft Data requirements spreadsheet (To be sent to Data Governance team) |  | 1d | 2019-02-19 | 2019-02-19 | 22 | 31d | 0d | start no earlier than 2018-12-10 | Maya Henderson | 8h |
| 25 | 2.1.3.6 | BRD Final Draft |  | 1d | 2019-02-19 | 2019-02-19 | 22 | 34d | 0d |  | Ba | 8h |
| 26 | 2.1.3.7 | Final Walk with Business Owner and Approval |  | 1d | 2019-02-20 | 2019-02-20 | 25 | 34d | 0d |  | Ba | 8h |

| ID | WBS | Task | Type | Duration | Start | Finish | Predecessors | Total slack | Free slack | Constraint | Resources | Work |
| --- | --- | --- | --- | --- | --- | --- | --- | --- | --- | --- | --- | --- |
| 27 | 2.2 | **Design** |  | 3d | 2019-02-21 | 2019-02-25 |  | 34d |  |  |  | 40h |
| 28 | 2.2.1 | **API Design** |  | 3d | 2019-02-21 | 2019-02-25 |  | 34d |  |  |  | 8h |
| 29 | 2.2.1.1 | Create final Data requirements spreadsheet (To be sent to Data team) |  | 1d | 2019-02-21 | 2019-02-21 | 26 | 45d |  | start no earlier than 2018-12-10 | Maya Henderson | 8h |
| 30 | 2.2.1.2 | **Policy Orchestration API** |  | 3d | 2019-02-21 | 2019-02-25 |  | 34d |  |  |  |  |
| 31 | 2.2.1.2.1 | Update existing Orchestrator API design |  | 2d | 2019-02-21 | 2019-02-22 | 26 | 34d | 0d |  |  |  |
| 32 | 2.2.1.2.2 | Submit the Design Doc for Roundtable |  | 1d | 2019-02-25 | 2019-02-25 | 31 | 43d |  |  |  |  |
| 33 | 2.2.1.2.3 | Receive Design Approval (after updates if req.) |  | 1d | 2019-02-25 | 2019-02-25 | 31 | 34d | 0d |  |  |  |
| 34 | 2.2.2 | **UI Design** |  | 3d | 2019-02-21 | 2019-02-25 |  | 37d |  |  |  | 32h |
| 35 | 2.2.2.1 | UI/UX design |  | 1d | 2019-02-21 | 2019-02-21 | 26 | 37d | 0d |  | Prasath | 8h |
| 36 | 2.2.2.2 | Create design document |  | 1d | 2019-02-22 | 2019-02-22 | 35 | 37d | 0d |  | Prasath | 8h |
| 37 | 2.2.2.3 | Submit document to design roundtable |  | 1d | 2019-02-25 | 2019-02-25 | 36 | 43d |  |  | Prasath | 8h |
| 38 | 2.2.2.4 | Receive Design Approval (after updates if req.) |  | 1d | 2019-02-22 | 2019-02-22 | 36SS | 37d | 0d |  | Prasath | 8h |
| 39 | 2.3 | **Development & Unit Testing** |  | 11d | 2019-02-25 | 2019-03-11 |  | 31d | 0d |  |  | 72h |
| 40 | 2.3.1 | Submit Cassandra Request | milestone | 0d | 2019-02-28 | 2019-02-28 | 7 | 31d | 0d |  |  |  |
| 41 | 2.3.2 | **API Development** |  | 5d | 2019-03-01 | 2019-03-07 |  | 31d |  |  |  |  |
| 42 | 2.3.2.1 | **Policy Orchestration API** |  | 5d | 2019-03-01 | 2019-03-07 |  | 31d |  |  |  |  |
| 43 | 2.3.2.1.1 | Update the Orch. API code |  | 2d | 2019-03-01 | 2019-03-04 | 33, 7 | 31d | 0d |  |  |  |
| 44 | 2.3.2.1.2 | Unit test the Orch. API code |  | 1d | 2019-03-05 | 2019-03-05 | 43 | 31d | 0d |  |  |  |
| 45 | 2.3.2.1.3 | Submit for code review |  | 1d | 2019-03-05 | 2019-03-05 | 44SS | 31d | 0d |  |  |  |
| 46 | 2.3.2.1.4 | Make changes to Orch API based on code review feedback |  | 2d | 2019-03-06 | 2019-03-07 | 45 | 31d | 0d |  |  |  |
| 47 | 2.3.2.1.5 | Deploy the Code to Feature Branch |  | 2d | 2019-03-06 | 2019-03-07 | 46SS | 31d | 0d |  |  |  |
| 48 | 2.3.2.1.6 | Unit Test in the Feature Branch |  | 2d | 2019-03-06 | 2019-03-07 | 47SS, 10 | 31d | 0d |  |  |  |
| 49 | 2.3.3 | **UI Development** |  | 11d | 2019-02-25 | 2019-03-11 |  | 31d |  |  |  | 72h |
| 50 | 2.3.3.1 | **life-microsite-connext-details-annuities** |  | 11d | 2019-02-25 | 2019-03-11 |  | 31d |  |  |  | 72h |
| 51 | 2.3.3.1.1 | Implement UI |  | 2d | 2019-02-25 | 2019-02-26 | 38 | 37d | 0d |  | Prasath | 16h |
| 52 | 2.3.3.1.2 | AEM Components to be Updated/ built |  | 1d | 2019-02-27 | 2019-02-27 | 51 | 37d | 6d |  | Prasath | 8h |
| 53 | 2.3.3.1.3 | Wire Up with the API |  | 1d | 2019-03-08 | 2019-03-08 | 48, 52 | 31d | 0d |  | Prasath | 8h |
| 54 | 2.3.3.1.4 | Unit Test |  | 1d | 2019-03-08 | 2019-03-08 | 53SS | 31d | 0d |  | Prasath | 8h |
| 55 | 2.3.3.1.5 | Submit for code review |  | 1d | 2019-03-08 | 2019-03-08 | 54SS | 31d | 0d |  | Prasath | 8h |
| 56 | 2.3.3.1.6 | Make changes based on code review feedback |  | 1d | 2019-03-11 | 2019-03-11 | 55 | 31d | 0d |  | Prasath | 8h |
| 57 | 2.3.3.1.7 | Code Check into Feature Branch |  | 1d | 2019-03-11 | 2019-03-11 | 56SS | 31d | 0d |  | Prasath | 8h |
| 58 | 2.3.3.1.8 | Unit Test in the Feature Branch |  | 1d | 2019-03-11 | 2019-03-11 | 57SS, 10 | 31d |  |  | Prasath | 8h |
| 59 | 2.4 | Demo to QA & Stakeholders |  | 1d | 2019-03-12 | 2019-03-12 | 39 | 31d | 0d |  | Prasath | 8h |

| ID | WBS | Task | Duration | Start | Finish | Predecessors | Total slack | Free slack | Constraint | Resources | Work |
| --- | --- | --- | --- | --- | --- | --- | --- | --- | --- | --- | --- |
| 60 | 2.5 | **Prep for Non-Prod Deployment** | 1d | 2019-03-13 | 2019-03-13 |  | 31d |  |  |  | 16h |
| 61 | 2.5.1 | UI : Submit the Pull Request and Submit Code Review | 1d | 2019-03-13 | 2019-03-13 | 59 | 31d | 0d |  | Prasath | 8h |
| 62 | 2.5.2 | UI : Make changes based on Non-Prod code review feedback | 1d | 2019-03-13 | 2019-03-13 | 61SS | 31d | 0d |  | Prasath | 8h |
| 63 | 2.5.3 | API: Submit the Pull Request and Submit Code Review | 1d | 2019-03-13 | 2019-03-13 | 62SS | 31d | 0d |  |  |  |
| 64 | 2.5.4 | API: Make changes based on Non-Prod code review feedback | 1d | 2019-03-13 | 2019-03-13 | 63SS | 31d |  |  |  |  |
| 65 | 2.6 | **QA-FT Prep** | 3d | 2019-02-21 | 2019-02-25 |  | 43d |  |  |  | 24h |
| 66 | 2.6.1 | **Life QA** | 3d | 2019-02-21 | 2019-02-25 |  | 43d |  |  |  | 24h |
| 67 | 2.6.1.1 | Draft Test Cases | 2d | 2019-02-21 | 2019-02-22 | 26 | 43d | 0d |  | QA | 16h |
| 68 | 2.6.1.2 | Review Test Cases with Tech and Business | 1d | 2019-02-25 | 2019-02-25 | 67 | 43d |  |  | QA | 8h |
| 69 | 2.7 | **Code Scans and Prep for Prod** | 4d | 2019-04-22 | 2019-04-25 |  | 0d |  |  |  | 32h |
| 70 | 2.7.1 | Submit Vera Code Scan Request | 2d | 2019-04-22 | 2019-04-23 |  | 0d |  | start no earlier than 2019-04-22 | Prasath | 16h |
| 71 | 2.7.2 | Submit for Archer Req. and Update the Run Book | 2d | 2019-04-24 | 2019-04-25 | 70 | 0d |  |  | Prasath | 16h |
